# Projekt1-kopia

Schedule from MS Project, 2019-02-01 to 2020-01-20, costs in zł.

## Calendars

- Standardowy: Mon-Fri 09:00-13:00, 14:00-18:00; Sat-Sun off.

## Resources

| Resource | Group | Unit | Rate |
| --- | --- | --- | --- |
| Licence for DevOps | Technologia | szt. | 0.12 |
| Licence for Designer | Technologia | szt. | 0.63 |
| Laptop for DevOps | Technologia | szt. | 5000 |
| Laptop for Designers | Technologia | szt. | 7000 |
| Laptop for WebDev | Technologia | szt. | 10000 |
| Project Manager | Pracownicy |  | 62 |
| Product Manager | Pracownicy |  | 50 |
| Designer | Pracownicy |  | 75 |
| Architekt | Pracownicy |  | 75 |
| Web Developer | Pracownicy |  | 94 |
| DevOps | Pracownicy |  | 75 |
| Back-End Developer | Pracownicy |  | 75 |
| Monitor | Technologia |  | 800 |
| Mouse | Technologia |  | 100 |
| Keyboard | Technologia |  | 100 |
| Domena | Technologia |  | 0.04 |
| Usługa serwera w chmurze | Technologia |  | 0.48 |

## Schedule

| ID | WBS | Task | Type | Duration | Start | Finish | Predecessors | Resources | Work | Cost |
| --- | --- | --- | --- | --- | --- | --- | --- | --- | --- | --- |
| 1 | 1 | **Opracowanie specyfikacji aplikacji WEB** |  | 36d | 2019-02-01 | 2019-03-22 |  | Project Manager [33%] | 631.04h | 40,004.48 |
| 2 | 1.1 | Zebranie przypadków użycia | manual | 5d | 2019-02-01 | 2019-02-07 |  | Product Manager | 40h | 2,000 |
| 3 | 1.2 | Opracowanie scenariuszy | manual | 4d | 2019-02-08 | 2019-02-13 | 2 | Product Manager | 32h | 1,600 |
| 4 | 1.3 | Stworzenie szczegółowej specyfikacji | manual | 24d | 2019-02-14 | 2019-03-19 | 3 | Product Manager | 192h | 9,600 |
| 5 | 1.4 | Szkolenie oraz przedyskutowanie z programistami specyfikacji | manual | 2d | 2019-03-20 | 2019-03-21 | 4 | Product Manager; Architekt; Back-End Developer; DevOps; Web Developer [300%] | 112h | 8,912 |
| 6 | 1.5 | Opracowanie grafik na podstawie scenariuszy | manual | 20d | 2019-02-14 | 2019-03-13 | 2 | Designer | 160h | 12,000 |
| 7 | 2 | Zakończenie etapu opracowywania specyfikacji | milestone, manual | 0d | 2019-03-22 | 2019-03-22 | 5, 6 |  |  |  |
| 8 | 3 | **Opracowanie wymagań architektury systemu** |  | 23d | 2019-02-27 | 2019-03-29 |  | Project Manager [33%] | 260.72h | 18,764.64 |
| 9 | 3.1 | Opracowanie wstępnych zależności systemu | manual | 5d | 2019-02-27 | 2019-03-05 |  | Architekt | 40h | 3,000 |
| 10 | 3.2 | Opracowanie protokołów komunikacyjnych | manual | 5d | 2019-03-06 | 2019-03-12 | 9 | Architekt | 40h | 3,000 |
| 11 | 3.3 | Określenie szczegółowych encji bazy danych | manual | 5d | 2019-03-13 | 2019-03-19 | 10 | Architekt | 40h | 3,000 |
| 12 | 3.4 | Określenie metod API serwera komunikacyjnego | manual | 5d | 2019-03-22 | 2019-03-28 | 11 | Back-End Developer; Architekt | 80h | 6,000 |
| 13 | 4 | Zakończenie etapu opracowywania wymagań architektury systemu | milestone, manual | 0d | 2019-03-29 | 2019-03-29 | 12 |  |  |  |
| 14 | 5 | **Implementacja prototypu systemu** |  | 40d | 2019-04-01 | 2019-05-24 | 8, 1 | Project Manager [33%] | 1425.6h | 121,531.2 |
| 15 | 5.1 | Tworzenie głównych komponentów aplikacji WEB na bazie grafik | manual | 15d | 2019-04-01 | 2019-04-19 |  | Web Developer [300%] | 360h | 33,840 |
| 16 | 5.2 | Stworzenie systemu logowania użytkownika | manual | 10d | 2019-04-01 | 2019-04-12 |  | Back-End Developer | 80h | 6,000 |
| 17 | 5.3 | Łączenie komponentów aplikacji WEB z logiką biznesową | manual | 15d | 2019-04-22 | 2019-05-10 | 15 | Web Developer [300%] | 360h | 33,840 |
| 18 | 5.4 | Opracowanie punktów końcowych serwera komunikacyjnego | manual | 12d | 2019-04-15 | 2019-04-30 | 16 | Back-End Developer | 96h | 7,200 |
| 19 | 5.5 | Testowanie elementów interfejsu użytkownika | manual | 5d | 2019-05-13 | 2019-05-17 | 17 | Web Developer [300%]; Product Manager [50%] | 140h | 12,280 |
| 20 | 5.6 | Testowanie endpointów serwera komunikacyjnego | manual | 13d | 2019-05-01 | 2019-05-17 | 18 | Back-End Developer; Product Manager [50%] | 156h | 10,400 |
| 21 | 5.7 | Wprowadzenie poprawek po znalezionych błędach przez testy do całego systemu | manual | 4d | 2019-05-20 | 2019-05-23 | 19, 20 | Web Developer [300%]; Back-End Developer | 128h | 11,424 |
| 22 | 6 | Zakończenie etapu implementacji prototypu systemu | milestone, manual | 0d | 2019-05-24 | 2019-05-24 | 21 |  |  |  |
| 23 | 7 | **Implementacja ostatecznej wersji systemu** |  | 100d | 2019-05-27 | 2019-10-11 | 14 | Project Manager [33%] | 3880h | 333,168 |
| 24 | 7.1 | **Implementacja aplikacji WEB** |  | 100d | 2019-05-27 | 2019-10-11 | 14 | Web Developer [300%] | 2400h | 225,600 |
| 25 | 7.1.1 | Implementacja panelu użytkownika | manual | 20d | 2019-05-27 | 2019-06-21 | 14 |  |  |  |
| 26 | 7.1.2 | Szczegółowa implementacja panelu tabel sprzedaży | manual | 40d | 2019-06-24 | 2019-08-16 | 25 |  |  |  |
| 27 | 7.1.3 | Szczegółowa implementacja panelu tabel kupna | manual | 40d | 2019-08-19 | 2019-10-11 | 26 |  |  |  |

| ID | WBS | Task | Type | Duration | Start | Finish | Predecessors | Total slack | Resources | Work | Cost |
| --- | --- | --- | --- | --- | --- | --- | --- | --- | --- | --- | --- |
| 28 | 7.2 | **Implementacja metod serwera** |  | 100d | 2019-05-27 | 2019-10-11 | 14 | 0d | Back-End Developer | 800h | 60,000 |
| 29 | 7.2.1 | Wprowadzenie systemu transakcji | manual | 30d | 2019-05-27 | 2019-07-05 | 14 |  |  |  |  |
| 30 | 7.2.2 | Obsługa wszystkich przypadków użycia | manual | 70d | 2019-07-08 | 2019-10-11 | 29 |  |  |  |  |
| 31 | 7.3 | Stworzenie automatycznych testów systemu | manual | 20d | 2019-05-27 | 2019-06-21 | 14 |  | DevOps | 160h | 12,000 |
| 32 | 7.4 | Stworzenie środowiska monitorującego system w trakcie pracy | manual | 20d | 2019-06-24 | 2019-07-19 | 31 |  | DevOps | 160h | 12,000 |
| 33 | 7.5 | Monitorowanie systemu | manual | 60d | 2019-07-22 | 2019-10-11 | 32 |  | DevOps [20%] | 96h | 7,200 |
| 34 | 8 | Zakończenie etapu implementacji systemu | milestone, manual | 0d | 2019-10-14 | 2019-10-14 | 24, 28, 33 |  |  |  |  |
| 35 | 9 | Wdrożenie systemu | manual | 9d | 2019-10-14 | 2019-10-24 | 34 |  | DevOps; Back-End Developer; Web Developer; Project Manager [33%] | 239.76h | 19,041.12 |
| 36 | 10 | **Zakończenie etapu wdrożenia** |  | 0d | 2019-10-25 | 2019-10-25 | 35 |  |  |  |  |
| 38 | 10.1 | Wprowadzanie poprawek wynikających ze statystyk | manual | 60d | 2019-10-28 | 2020-01-17 |  |  | Web Developer [10%]; Back-End Developer [10%] | 96h | 8,112 |
| 39 | 10.2 | Wprowadzenie poprawek wynikających z informacji zwortnej użytkownika | manual | 60d | 2019-10-28 | 2020-01-17 |  |  | Web Developer [20%]; Back-End Developer [10%] | 144h | 12,624 |
| 40 | 11 | Zakończenie procesu utrzymania | milestone, manual | 0d | 2020-01-20 | 2020-01-20 | 38, 39 |  |  |  |  |
